# 4.Diagrama de Gantt - SISTEMA ANDROID DE GESTION RECURSOS DE EDUCACIÓN

Schedule from MS Project, 2021-07-20 to 2021-12-03, costs in S, A marks actual dates.

## Calendars

- Estándar: Mon-Fri 09:00-13:00, 15:00-19:00; Sat-Sun off. Exceptions (off unless hours are given): 2021-07-28 to 2021-07-29 (Fiestas Patrias), 2021-08-30 (Santa Rosa de Lima), 2021-10-08 (Combate de Angamos), 2021-11-01 (Día de Todos los Santos).

## Resources

| Resource | Rate |
| --- | --- |
| Daniel Asencios Quijaite | 15 |
| Oswaldo Ramos Cordova | 15 |
| Movavi Studio | 200 |
| Laptop D. | 100 |
| Laptop O. | 100 |
| Luz | 20 |
| Firebase | 250 |
| Internet | 200 |
| Play Store | 250 |

## Schedule

| ID | WBS | Task | Duration | Start | Finish | Predecessors | Complete | Remaining | Total slack | Constraint | Resources | Work | Actual work | Cost | Actual cost |
| --- | --- | --- | --- | --- | --- | --- | --- | --- | --- | --- | --- | --- | --- | --- | --- |
| 1 | 1 | **Desarrollo de una aplicación móvil de Asistencia Educativa - AE** | 94d? | 2021-07-20 A | 2021-12-03 |  | 20% | 75.03d? | 0d |  |  | 1064h | 176h | 15,960 | 2,640 |
| 2 | 1.1 | **Documentación** | 17d | 2021-07-20 A | 2021-08-13 A |  | 100% |  |  |  |  | 176h | 176h | 2,640 | 2,640 |
| 3 | 1.1.1 | Recolección de Documentación y Requisitos | 5d | 2021-07-20 A | 2021-07-26 A |  | 100% |  |  |  | Oswaldo Ramos Cordova | 40h | 40h | 600 | 600 |
| 4 | 1.1.2 | Especificaciones del Software | 3d | 2021-07-27 A | 2021-08-02 A | 3 | 100% |  |  |  | Oswaldo Ramos Cordova | 24h | 24h | 360 | 360 |
| 5 | 1.1.3 | Incorporar mejoras de los requisitos | 2d | 2021-08-03 A | 2021-08-04 A | 4 | 100% |  |  |  | Daniel Asencios Quijaite | 16h | 16h | 240 | 240 |
| 6 | 1.1.4 | Elaboración del Presupuesto | 3d | 2021-08-05 A | 2021-08-09 A | 5 | 100% |  |  |  | Daniel Asencios Quijaite | 24h | 24h | 360 | 360 |
| 7 | 1.1.5 | Elaboración del Plan del Proyecto | 5d | 2021-08-03 A | 2021-08-09 A | 4 | 100% |  |  |  | Oswaldo Ramos Cordova | 40h | 40h | 600 | 600 |
| 8 | 1.1.6 | Aprobación del proyecto | 4d | 2021-08-10 A | 2021-08-13 A | 7 | 100% |  |  |  | Oswaldo Ramos Cordova | 32h | 32h | 480 | 480 |
| 9 | 1.2 | **Análisis y Diseño** | 1d? | 2021-07-20 | 2021-07-20 |  |  |  |  |  |  | 232h |  | 3,480 |  |
| 10 | 1.2.1 | Análisis de los Requisitos | 5d | 2021-08-16 | 2021-08-20 | 8 |  |  | 0d | finish no earlier than 2021-08-20 | Daniel Asencios Quijaite | 40h |  | 600 |  |
| 11 | 1.2.2 | Diseño de la Arquitectura de la BD | 5d | 2021-08-23 | 2021-08-27 | 10 |  |  | 0d |  | Oswaldo Ramos Cordova | 40h |  | 600 |  |
| 12 | 1.2.3 | Análisis de los Prototipos Enviados | 7d | 2021-08-31 | 2021-09-08 | 11 |  |  | 0d |  | Daniel Asencios Quijaite; Oswaldo Ramos Cordova | 112h |  | 1,680 |  |
| 13 | 1.2.4 | Incorporación de mejoras | 3d | 2021-09-09 | 2021-09-13 | 12 |  |  | 0d |  | Oswaldo Ramos Cordova | 24h |  | 360 |  |
| 14 | 1.2.5 | Aprobación del diseño | 2d | 2021-09-14 | 2021-09-15 | 13 |  |  | 0d |  | Daniel Asencios Quijaite | 16h |  | 240 |  |
| 15 | 1.3 | **Construcción** | 1d? | 2021-07-20 | 2021-07-20 |  |  |  |  |  |  | 400h |  | 6,000 |  |
| 16 | 1.3.1 | Codificación de la Arquitectura del programa | 30d | 2021-09-16 | 2021-10-28 | 14 |  |  | 0d |  | Oswaldo Ramos Cordova | 240h |  | 3,600 |  |
| 17 | 1.3.2 | Codificación de la Estructura de la DB | 10d | 2021-10-29 | 2021-11-12 | 16 |  |  | 0d |  | Daniel Asencios Quijaite; Oswaldo Ramos Cordova | 160h |  | 2,400 |  |
| 18 | 1.4 | **Pruebas de QA** | 1d? | 2021-07-20 | 2021-07-20 |  |  |  |  |  |  | 144h |  | 2,160 |  |
| 19 | 1.4.1 | Pruebas de Acceso a la app | 5d | 2021-11-15 | 2021-11-19 | 17 |  |  | 10d | finish no earlier than 2021-11-12 | Oswaldo Ramos Cordova | 40h |  | 600 |  |
| 20 | 1.4.2 | Pruebas de Funcionalidades | 5d | 2021-11-15 | 2021-11-19 | 17 |  |  | 0d |  | Daniel Asencios Quijaite; Oswaldo Ramos Cordova | 80h |  | 1,200 |  |
| 21 | 1.4.3 | Aprobación de Pruebas | 3d | 2021-11-22 | 2021-11-24 | 20 |  |  | 0d |  | Daniel Asencios Quijaite | 24h |  | 360 |  |
| 22 | 1.5 | **Cierre** | 1d? | 2021-07-20 | 2021-07-20 |  |  |  |  |  |  | 112h |  | 1,680 |  |
| 23 | 1.5.1 | **Entregables** | 1d? | 2021-07-20 | 2021-07-20 |  |  |  |  |  |  | 80h |  | 1,200 |  |
| 24 | 1.5.1.1 | Manuales de usuario | 5d | 2021-11-25 | 2021-12-01 | 21 |  |  | 2d |  | Oswaldo Ramos Cordova | 40h |  | 600 |  |
| 25 | 1.5.1.2 | Videos Tutoriales | 5d | 2021-11-25 | 2021-12-01 | 21 |  |  | 0d |  | Daniel Asencios Quijaite | 40h |  | 600 |  |
| 26 | 1.5.2 | Aprobación de Cierre | 2d | 2021-12-02 | 2021-12-03 | 25 |  |  | 0d |  | Daniel Asencios Quijaite; Oswaldo Ramos Cordova | 32h |  | 480 |  |
